# Plan de Trabajo

Schedule from MS Project, 2026-06-22 to 2026-07-03, 5 hours a day.

## Calendars

- Standard: Mon-Fri 08:00-12:00, 13:00-17:00; Sat-Sun off.

## Resources

| Resource |
| --- |
| Pamela Suazo |
| Recurso 2 |
| Plataformas Distribuidas |
| Proveedor |

## Schedule

| ID | WBS | Task | Duration | Start | Finish | Predecessors | Total slack | Resources | Work |
| --- | --- | --- | --- | --- | --- | --- | --- | --- | --- |
| 1 | 1 | **Proyecto BH-21980 Control de Cambio - Adecuación Sistema de Riesgo Operativo - Fase 2** | 14.76d | 2026-06-22 08:00 | 2026-07-03 09:48 |  | 0d | Pamela Suazo | 265.2h |
| 2 | 1.1 | **Desarrollo Innovación** | 9.96d | 2026-06-22 08:00 | 2026-06-30 09:48 |  | 0d | Pamela Suazo | 149.4h |
| 3 | 1.1.1 | **HU#1 Reportes Internos y CNBS** | 3.3d | 2026-06-22 08:00 | 2026-06-24 08:30 |  | 0d | Pamela Suazo | 33h |
| 4 | 1.1.1.1 | Modificar la visualización y parametrización de los menú de reporte | 1.2d | 2026-06-22 08:00 | 2026-06-22 15:00 |  | 0d | Pamela Suazo | 6h |
| 5 | 1.1.1.2 | Modificar validaciones de la carga de de Archivo Demandas y Juicios en ejecución | 1.2d | 2026-06-22 15:00 | 2026-06-23 12:00 | 4 | 0d | Pamela Suazo | 6h |
| 6 | 1.1.1.3 | Agregar validaciones en el Registro de Información Demandas y Juicios de Ejecución | 0.3d | 2026-06-23 13:00 | 2026-06-23 14:30 | 5 | 0d | Pamela Suazo | 1.5h |
| 7 | 1.1.1.4 | Agregar Filtro "Empresa" en el reprorte interno de Demandas y Juicios en Ejecución | 0.3d | 2026-06-23 14:30 | 2026-06-23 16:00 | 6 | 0d | Pamela Suazo | 1.5h |
| 8 | 1.1.1.5 | Agregar Filtro "Empresa" en el reprorte CNBS Demandas Cerradas | 0.3d | 2026-06-23 16:00 | 2026-06-24 08:30 | 7 | 0d | Pamela Suazo | 1.5h |
| 9 | 1.1.2 | **HU#2 Carga de Archivos de Excel para Eventos de Pérdida** | 2.28d | 2026-06-24 08:30 | 2026-06-25 11:54 |  | 0d | Pamela Suazo | 22.8h |
| 10 | 1.1.2.1 | Agregar filtro "Mes de cierre" en la opción de Carga Masiva Eventos de Pérdida | 1.2d | 2026-06-24 08:30 | 2026-06-24 15:30 | 8 | 0d | Pamela Suazo | 6h |
| 11 | 1.1.2.2 | Modificación en el campo Mes Cierre para que muestre los meses que el admin haya habilitado | 0.3d | 2026-06-24 15:30 | 2026-06-24 17:00 | 10 | 0d | Pamela Suazo | 1.5h |
| 12 | 1.1.2.3 | Corrección de fecha de registro para meses anteriores (Usar fecha de mes anterior seleccionado) | 0.3d | 2026-06-25 08:00 | 2026-06-25 09:30 | 11 | 0d | Pamela Suazo | 1.5h |
| 13 | 1.1.2.4 | Corrección para permitir un registro mensual por canal (ATM) | 0.3d | 2026-06-25 09:30 | 2026-06-25 11:00 | 12 | 0d | Pamela Suazo | 1.5h |
| 14 | 1.1.2.5 | Agregar Filtro ""Empresa"" en el reprorte interno de Demandas Cerradas | 0.18d | 2026-06-25 11:00 | 2026-06-25 11:54 | 13 | 0d | Pamela Suazo | 0.9h |
| 15 | 1.1.3 | **HU#3 Registro de Canaes de servicios disponibles (POS)** | 0.78d | 2026-06-25 11:54 | 2026-06-25 16:48 |  | 0d | Pamela Suazo | 7.8h |
| 16 | 1.1.3.1 | Modificación en el campo Mes Cierre para que muestre los meses que el admin haya habilitado | 0.12d | 2026-06-25 11:54 | 2026-06-25 13:30 | 14 | 0d | Pamela Suazo | 0.6h |
| 17 | 1.1.3.2 | Corrección de fecha de registro para meses anteriores (Usar fecha de mes anterior seleccionado) | 0.18d | 2026-06-25 13:30 | 2026-06-25 14:24 | 16 | 0d | Pamela Suazo | 0.9h |
| 18 | 1.1.3.3 | Corrección para permitir un registro mensual por canal (POS) | 0.18d | 2026-06-25 14:24 | 2026-06-25 15:18 | 17 | 0d | Pamela Suazo | 0.9h |
| 19 | 1.1.3.4 | Corrección en el reporte de transacciones por canales de servicio | 0.3d | 2026-06-25 15:18 | 2026-06-25 16:48 | 18 | 0d | Pamela Suazo | 1.5h |
| 20 | 1.1.4 | **HU#4 Reporte de Canales de servicios disponibles (ATM/POS)** | 2.1d | 2026-06-25 16:48 | 2026-06-29 10:18 |  | 0d | Pamela Suazo | 21h |
| 21 | 1.1.4.1 | Corrección de reporte de canales de servicio disponible (ATM / POS) | 0.3d | 2026-06-25 16:48 | 2026-06-26 09:18 | 19 | 0d | Pamela Suazo | 1.5h |
| 22 | 1.1.4.2 | Corrección de reporte de transacciones por canales de servicio CNBS | 0.3d | 2026-06-26 09:18 | 2026-06-26 10:48 | 21 | 0d | Pamela Suazo | 1.5h |
| 23 | 1.1.4.3 | Creación de Filtros para generar reporte de canales de servicio disponible (ATM / POS) | 0.3d | 2026-06-26 10:48 | 2026-06-26 13:18 | 22 | 0d | Pamela Suazo | 1.5h |
| 24 | 1.1.4.4 | Ajuste a reporte de eventos de pérdida - eventos agrupados | 1.2d | 2026-06-26 13:18 | 2026-06-29 10:18 | 23 | 0d | Pamela Suazo | 6h |

| ID | WBS | Task | Duration | Start | Finish | Predecessors | Total slack | Resources | Work |
| --- | --- | --- | --- | --- | --- | --- | --- | --- | --- |
| 25 | 1.1.5 | **Rebranding** | 0.3d | 2026-06-29 10:18 | 2026-06-29 11:48 |  | 0d | Pamela Suazo | 3h |
| 26 | 1.1.5.1 | Actualización de Logo | 0.3d | 2026-06-29 10:18 | 2026-06-29 11:48 | 24 | 0d | Pamela Suazo | 1.5h |
| 27 | 1.1.6 | **Recordatorio por Correo** | 1.2d | 2026-06-29 11:48 | 2026-06-30 09:48 |  | 0d | Pamela Suazo | 12h |
| 28 | 1.1.6.1 | Modificación de contenido, asunto e imágenes del recordatorio | 1.2d | 2026-06-29 11:48 | 2026-06-30 09:48 | 26 | 0d | Pamela Suazo | 6h |
| 29 | 1.2 | **Pruebas Técnicas** | 1.2d | 2026-06-30 09:48 | 2026-06-30 16:48 |  | 0d | Pamela Suazo | 12h |
| 30 | 1.2.1 | Ejecutar pruebas técnicas en ambiente desarrollo | 1.2d | 2026-06-30 09:48 | 2026-06-30 16:48 | 28 | 0d | Pamela Suazo | 6h |
| 31 | 1.3 | **Documentación** | 1.2d | 2026-06-30 16:48 | 2026-07-01 14:48 |  | 0d |  | 6h |
| 32 | 1.3.1 | Elaborar documento técnico | 1.2d | 2026-06-30 16:48 | 2026-07-01 14:48 | 30 | 0d | Pamela Suazo | 6h |
| 33 | 1.4 | **Pruebas Cruzadas** | 2.4d | 2026-07-01 14:48 | 2026-07-03 09:48 |  | 0d |  | 24h |
| 34 | 1.4.1 | Reunión para presentación del proyecto | 1.2d | 2026-07-01 14:48 | 2026-07-02 11:48 | 32 | 0d | Pamela Suazo; Recurso 2 | 12h |
| 35 | 1.4.2 | Ejecución de pruebas cruzadas | 1.2d | 2026-07-02 11:48 | 2026-07-03 09:48 | 34 | 0d | Recurso 2 | 6h |
| 36 | 1.4.3 | Corrección de hallazgos en pruebas cruzadas | 1.2d | 2026-07-02 11:48 | 2026-07-03 09:48 | 34 | 0d | Pamela Suazo | 6h |
